# Cronograma Sapienter v2.1

Schedule from MS Project, 2011-04-05 to 2011-10-22, 4 hours a day, A marks actual dates.
Hewlett-Packard

## Calendars

- Estándar: Mon off; Tue 19:00-23:00; Wed-Thu off; Fri-Sun 19:00-23:00. Exceptions (off unless hours are given): 2011-04-26 19:00-23:00, 2011-07-13 to 2011-08-05.

## Resources

| Resource |
| --- |
| Romina |
| Franco |
| Matías |
| Nicolás |
| Gabriel |

## Schedule

| ID | WBS | Task | Duration | Start | Finish | Total slack | Constraint | Resources | Work |
| --- | --- | --- | --- | --- | --- | --- | --- | --- | --- |
| 1 | 1 | **Gestión de proyecto** | 96d | 2011-04-05 | 2011-10-11 | 3d |  |  | 560h |
| 2 | 1.1 | **Control de avance** | 96d | 2011-04-05 | 2011-10-11 | 3d |  |  | 560h |
| 3 | 1.1.1 | Control de avance 1 | 1d | 2011-04-05 | 2011-04-05 | 100d | start no earlier than 2011-04-05 | Romina; Franco; Matías; Nicolás; Gabriel | 20h |
| 4 | 1.1.2 | Control de avance 2 | 1d | 2011-04-12 | 2011-04-12 | 96d | start no earlier than 2011-04-12 | Romina; Franco; Matías; Nicolás; Gabriel | 20h |
| 5 | 1.1.3 | Control de avance 3 | 1d | 2011-04-19 | 2011-04-19 | 92d | start no earlier than 2011-04-19 | Romina; Franco; Matías; Nicolás; Gabriel | 20h |
| 6 | 1.1.4 | Control de avance 4 | 1d | 2011-04-26 | 2011-04-26 | 88d | start no earlier than 2011-04-26 | Romina; Franco; Matías; Nicolás; Gabriel | 20h |
| 7 | 1.1.5 | Control de avance 5 | 1d | 2011-05-03 | 2011-05-03 | 84d | start no earlier than 2011-05-03 | Romina; Franco; Matías; Nicolás; Gabriel | 20h |
| 8 | 1.1.6 | Control de avance 6 | 1d | 2011-05-10 | 2011-05-10 | 80d | start no earlier than 2011-05-10 | Romina; Franco; Matías; Nicolás; Gabriel | 20h |
| 9 | 1.1.7 | Control de avance 7 | 1d | 2011-05-17 | 2011-05-17 | 76d | start no earlier than 2011-05-17 | Romina; Franco; Matías; Nicolás; Gabriel | 20h |
| 10 | 1.1.8 | Control de avance 8 | 1d | 2011-05-24 | 2011-05-24 | 72d | start no earlier than 2011-05-24 | Romina; Franco; Matías; Nicolás; Gabriel | 20h |
| 11 | 1.1.9 | Control de avance 9 | 1d | 2011-05-31 | 2011-05-31 | 68d | start no earlier than 2011-05-31 | Romina; Franco; Matías; Nicolás; Gabriel | 20h |
| 12 | 1.1.10 | Control de avance 10 | 1d | 2011-06-07 | 2011-06-07 | 64d | start no earlier than 2011-06-07 | Romina; Franco; Matías; Nicolás; Gabriel | 20h |
| 13 | 1.1.11 | Control de avance 11 | 1d | 2011-06-14 | 2011-06-14 | 60d | start no earlier than 2011-06-14 | Romina; Franco; Matías; Nicolás; Gabriel | 20h |
| 14 | 1.1.12 | Control de avance 12 | 1d | 2011-06-21 | 2011-06-21 | 56d | start no earlier than 2011-06-21 | Romina; Franco; Matías; Nicolás; Gabriel | 20h |
| 15 | 1.1.13 | Control de avance 13 | 1d | 2011-06-28 | 2011-06-28 | 52d | start no earlier than 2011-06-28 | Romina; Franco; Matías; Nicolás; Gabriel | 20h |
| 16 | 1.1.14 | Control de avance 14 | 1d | 2011-07-05 | 2011-07-05 | 48d | start no earlier than 2011-07-05 | Romina; Franco; Matías; Nicolás; Gabriel | 20h |
| 17 | 1.1.15 | Control de avance 15 | 1d | 2011-07-12 | 2011-07-12 | 44d | start no earlier than 2011-07-12 | Romina; Franco; Matías; Nicolás; Gabriel | 20h |
| 18 | 1.1.16 | Control de avance 16 | 1d | 2011-08-06 | 2011-08-06 | 43d | start no earlier than 2011-07-19 | Romina; Franco; Matías; Nicolás; Gabriel | 20h |
| 19 | 1.1.17 | Control de avance 17 | 1d | 2011-08-06 | 2011-08-06 | 43d | start no earlier than 2011-07-26 | Romina; Franco; Matías; Nicolás; Gabriel | 20h |
| 20 | 1.1.18 | Control de avance 18 | 1d | 2011-08-06 | 2011-08-06 | 43d | start no earlier than 2011-08-02 | Romina; Franco; Matías; Nicolás; Gabriel | 20h |
| 21 | 1.1.19 | Control de avance 19 | 1d | 2011-08-09 | 2011-08-09 | 41d | start no earlier than 2011-08-09 | Romina; Franco; Matías; Nicolás; Gabriel | 20h |
| 22 | 1.1.20 | Control de avance 20 | 1d | 2011-08-16 | 2011-08-16 | 37d | start no earlier than 2011-08-16 | Romina; Franco; Matías; Nicolás; Gabriel | 20h |
| 23 | 1.1.21 | Control de avance 21 | 1d | 2011-08-23 | 2011-08-23 | 33d | start no earlier than 2011-08-23 | Romina; Franco; Matías; Nicolás; Gabriel | 20h |
| 24 | 1.1.22 | Control de avance 22 | 1d | 2011-08-30 | 2011-08-30 | 29d | start no earlier than 2011-08-30 | Romina; Franco; Matías; Nicolás; Gabriel | 20h |
| 25 | 1.1.23 | Control de avance 23 | 1d | 2011-09-06 | 2011-09-06 | 25d | start no earlier than 2011-09-06 | Romina; Franco; Matías; Nicolás; Gabriel | 20h |
| 26 | 1.1.24 | Control de avance 24 | 1d | 2011-09-13 | 2011-09-13 | 21d | start no earlier than 2011-09-13 | Romina; Franco; Matías; Nicolás; Gabriel | 20h |
| 27 | 1.1.25 | Control de avance 25 | 1d | 2011-09-20 | 2011-09-20 | 17d | start no earlier than 2011-09-20 | Romina; Franco; Matías; Nicolás; Gabriel | 20h |
| 28 | 1.1.26 | Control de avance 26 | 1d | 2011-09-27 | 2011-09-27 | 13d | start no earlier than 2011-09-27 | Romina; Franco; Matías; Nicolás; Gabriel | 20h |
| 29 | 1.1.27 | Control de avance 27 | 1d | 2011-10-04 | 2011-10-04 | 9d | start no earlier than 2011-10-04 | Romina; Franco; Matías; Nicolás; Gabriel | 20h |
| 30 | 1.1.28 | Control de avance 28 | 1d | 2011-10-11 | 2011-10-11 | 5d | start no earlier than 2011-10-11 | Romina; Franco; Matías; Nicolás; Gabriel | 20h |

| ID | WBS | Task | Duration | Start | Finish | Predecessors | Complete | Remaining | Total slack | Free slack | Constraint | Resources | Work | Actual work |
| --- | --- | --- | --- | --- | --- | --- | --- | --- | --- | --- | --- | --- | --- | --- |
| 32 | 2 | **Planificación** | 58d | 2011-04-08 A | 2011-08-07 |  | 76% | 13.81d | 40d |  |  |  | 155.88h | 155.88h |
| 33 | 2.1 | WBS | 3d | 2011-04-08 A | 2011-04-10 A |  | 100% |  |  |  | start no earlier than 2011-04-08 | Franco; Romina; Matías | 36h | 36h |
| 34 | 2.2 | Matriz de roles | 3d | 2011-04-15 A | 2011-04-17 A | 33 | 100% |  |  |  | finish no earlier than 2011-04-17 | Franco; Matías; Romina | 36h | 36h |
| 35 | 2.3 | Plan de proyecto | 7d | 2011-04-15 A | 2011-04-24 A | 33 | 100% |  |  |  | start no earlier than 2011-04-15 | Gabriel [85%]; Nicolás [86%] | 47.88h | 47.88h |
| 36 | 2.4 | Matriz de comunicaciones | 3d | 2011-04-22 A | 2011-04-24 A | 33 | 100% |  |  |  | start no earlier than 2011-04-22 | Franco; Matías; Romina | 36h | 36h |
| 37 | 2.5 | Estudio de viavilidad y analisis de Riesgos | 3d | 2011-07-01 | 2011-07-03 | 35 |  |  | 47d | 5d | start no earlier than 2011-07-01 |  |  |  |
| 38 | 2.6 | Plan de GCSW | 2d | 2011-08-06 | 2011-08-07 | 37 |  |  | 42d |  | start no earlier than 2011-08-06 |  |  |  |
| 40 | 3 | **Relevamiento - Requerimientos** | 11d | 2011-04-22 | 2011-05-08 | 33 |  |  | 13d | 0d |  |  |  |  |
| 41 | 3.1 | Informe de Relevamiento | 7d | 2011-04-22 | 2011-05-01 | 33 |  |  | 9d | 0d | start no earlier than 2011-04-22 |  |  |  |
| 42 | 3.2 | Informe de Esp. Requerimientos | 4d | 2011-05-03 | 2011-05-08 | 41 |  |  | 9d | 0d | start no earlier than 2011-05-03 |  |  |  |
| 44 | 4 | **Analisis y Diseño** | 41d | 2011-05-10 | 2011-08-12 | 40 |  |  | 13d | 0d |  |  |  |  |
| 45 | 4.1 | Diagrama Gral. Casos de Uso | 4d | 2011-05-10 | 2011-05-15 | 42 |  |  | 13d | 1d |  |  |  |  |
| 46 | 4.2 | Especificaciones de cada Caso de Uso | 4d | 2011-05-10 | 2011-05-15 | 42 |  |  | 13d | 1d |  |  |  |  |
| 47 | 4.3 | Diagramas de Secuencia | 5d | 2011-05-20 | 2011-05-27 | 45, 46 |  |  | 12d | 0d | start no earlier than 2011-05-20 |  |  |  |
| 48 | 4.4 | Diagramas de Colaboración | 5d | 2011-05-28 | 2011-06-04 | 47 |  |  | 12d | 0d |  |  |  |  |
| 49 | 4.5 | Diagramas de Actividades | 5d | 2011-05-28 | 2011-06-04 | 47 |  |  | 12d | 0d |  |  |  |  |
| 50 | 4.6 | Diagramas de estados | 5d | 2011-05-28 | 2011-06-04 | 47 |  |  | 12d | 0d |  |  |  |  |
| 51 | 4.7 | Diagrama e integración de capas | 5d | 2011-06-05 | 2011-06-12 | 48, 49, 50 |  |  | 12d | 0d |  |  |  |  |
| 52 | 4.8 | Diagrama de Clases | 5d | 2011-06-14 | 2011-06-21 | 51 |  |  | 12d | 8d |  |  |  |  |
| 53 | 4.9 | Diagrama Entidad Relacion | 5d | 2011-06-14 | 2011-06-21 | 51 |  |  | 50d |  |  |  |  |  |
| 54 | 4.10 | Prototipos de interfaces | 6d | 2011-06-18 | 2011-06-26 | 51 |  |  | 47d |  | start no earlier than 2011-06-18 |  |  |  |
| 55 | 4.11 | Diagrama de Componentes | 4d | 2011-07-08 | 2011-07-12 | 52 |  |  | 34d | 0d | start no earlier than 2011-07-08 |  |  |  |
| 56 | 4.12 | Documentación De Arquitectura | 4d | 2011-08-06 | 2011-08-12 | 55 |  |  | 34d |  |  |  |  |  |
| 58 | 5 | **Presentación Comercial** | 4d | 2011-08-13 | 2011-08-19 | 44 |  |  | 34d |  |  |  |  |  |
| 59 | 5.1 | Planificación presentación | 2d | 2011-08-13 | 2011-08-14 | 44 |  |  | 34d | 0d |  |  |  |  |
| 60 | 5.2 | Documentación para presentación | 2d | 2011-08-16 | 2011-08-19 | 59 |  |  | 34d |  |  |  |  |  |
| 61 | 5.3 | Simulación presentación | 1d | 2011-08-16 | 2011-08-16 | 59 |  |  | 35d |  |  |  |  |  |

| ID | WBS | Task | Duration | Start | Finish | Predecessors | Total slack | Constraint |
| --- | --- | --- | --- | --- | --- | --- | --- | --- |
| 63 | 6 | **Desarrollo Software** | 42d | 2011-08-06 | 2011-10-16 | 52 | 0d |  |
| 64 | 6.1 | **Iteración 1** | 11d | 2011-08-06 | 2011-08-23 | 52 | 0d |  |
| 65 | 6.1.1 | Selección de requerimientos a incluir en la iteración | 1d | 2011-08-06 | 2011-08-06 | 52 | 0d | start no earlier than 2011-08-06 |
| 66 | 6.1.2 | Desarrollo de los requerimientos | 9d | 2011-08-07 | 2011-08-21 | 65 | 0d |  |
| 67 | 6.1.3 | Test de los requerimientos de la iteración | 9d | 2011-08-07 | 2011-08-21 | 65 | 0d |  |
| 68 | 6.1.4 | Ciierre iteración | 1d | 2011-08-23 | 2011-08-23 | 66, 67 | 0d |  |
| 69 | 6.2 | **Iteración 2** | 11d | 2011-08-26 | 2011-09-11 | 64 | 0d |  |
| 70 | 6.2.1 | Selección de requerimientos a incluir en la iteración | 1d | 2011-08-26 | 2011-08-26 | 64 | 0d | start no earlier than 2011-08-06 |
| 71 | 6.2.2 | Desarrollo de los requerimientos | 9d | 2011-08-27 | 2011-09-10 | 70 | 0d |  |
| 72 | 6.2.3 | Test de los requerimientos de la iteración | 9d | 2011-08-27 | 2011-09-10 | 70 | 0d |  |
| 73 | 6.2.4 | Ciierre iteración | 1d | 2011-09-11 | 2011-09-11 | 71, 72 | 0d |  |
| 74 | 6.3 | **Iteración 3** | 11d | 2011-09-13 | 2011-10-01 | 69 | 0d |  |
| 75 | 6.3.1 | Selección de requerimientos a incluir en la iteración | 1d | 2011-09-13 | 2011-09-13 | 69 | 0d |  |
| 76 | 6.3.2 | Desarrollo de los requerimientos | 9d | 2011-09-16 | 2011-09-30 | 75 | 0d |  |
| 77 | 6.3.3 | Test de los requerimientos de la iteración | 9d | 2011-09-16 | 2011-09-30 | 75 | 0d |  |
| 78 | 6.3.4 | Ciierre iteración | 1d | 2011-10-01 | 2011-10-01 | 76, 77 | 0d |  |
| 79 | 6.4 | **Test integral** | 9d | 2011-10-02 | 2011-10-16 | 74 | 0d |  |
| 80 | 6.4.1 | Documento de casos de pruebas | 2d | 2011-10-02 | 2011-10-04 | 74 | 0d |  |
| 81 | 6.4.2 | Testing | 7d | 2011-10-07 | 2011-10-16 | 80 | 0d |  |
| 82 | 6.5 | **Documentación** | 5d | 2011-10-02 | 2011-10-09 | 74 | 4d |  |
| 83 | 6.5.1 | Manual de usuario | 5d | 2011-10-02 | 2011-10-09 | 74 | 4d |  |
| 84 | 6.5.2 | Manual de Instalación | 5d | 2011-10-02 | 2011-10-09 | 74 | 4d |  |
| 86 | 7 | **Cierre de proyecto** | 3d | 2011-10-18 | 2011-10-22 | 63, 82, 58, 44, 40, 32, 1 | 0d |  |
| 87 | 7.1 | Documento de aceptación y cierre del proyecto | 3d | 2011-10-18 | 2011-10-22 | 63, 82, 58, 44, 40, 32, 1 | 0d |  |
| 88 | 7.2 | Lecciones Aprendidas | 3d | 2011-10-18 | 2011-10-22 | 63, 82, 58, 44, 40, 32, 1 | 0d |  |
